Schedule from GanttProject, 2017-07-04 to 2019-12-31.
INRS-ETE
Holidays every year on 01-01, 06-24, 07-01, 12-25

## Calendars

- Project calendar: Mon-Fri working; Sat-Sun off. Exceptions (off unless hours are given): 2017-09-04 (Labour Day), 2017-10-09 (Thanksgiving).

## Schedule

| ID | WBS | Task | Duration | Start | Finish | Predecessors | Complete |
| --- | --- | --- | --- | --- | --- | --- | --- |
| 1 | 1 | **Préparation des données hydrométriques, piézométriques et climatiques** | 27d | 2017-09-18 | 2017-10-25 |  | 100% |
| 2 | 1.1 | Télécharger les donnnées climatiques avec WHAT | 1d | 2017-09-18 | 2017-09-18 |  | 100% |
| 3 | 1.2 | Combler les données climatiques manquantes avec WHAT | 3d | 2017-09-19 | 2017-09-21 | 2 | 100% |
| 4 | 1.3 | Créer une API pour télécharger les données piézo du MDDELCC | 3d | 2017-09-25 | 2017-09-27 |  | 100% |
| 5 | 1.4 | Télécharger les données piézo du MDDELCC | 2d | 2017-09-28 | 2017-09-29 | 4 | 100% |
| 6 | 1.5 | **Données hydrométriques** | 6d | 2017-10-16 | 2017-10-23 |  | 100% |
| 7 | 1.5.1 | Tutoriel SQLite pour Python | 1d | 2017-10-16 | 2017-10-16 |  | 100% |
| 8 | 1.5.2 | Créer une API pour lire la base de données hydrométriques HYDAT | 2d | 2017-10-17 | 2017-10-18 | 7 | 100% |
| 9 | 1.5.3 | Créer une API pour télécharger les données hydrométriques du CEHQ | 1d | 2017-10-19 | 2017-10-19 |  | 100% |
| 10 | 1.5.4 | Récupérer les données hydrométriques du CEHQ | 1d | 2017-10-20 | 2017-10-20 | 9 | 100% |
| 11 | 1.5.5 | Améliorer l'API pour télécharger les données hydrométriques du CEHQ | 1d | 2017-10-23 | 2017-10-23 | 10 | 100% |
| 12 | 1.6 | Créer une API pour télécharger les données climatiques d'EC | 1d | 2017-10-23 | 2017-10-23 |  | 100% |
| 13 | 1.7 | Télécharger les données des stations climatiques actives du QC | 1d | 2017-10-24 | 2017-10-24 | 12 | 100% |
| 14 | 1.8 | Documenter l'API pour les données climatiques | 1d | 2017-10-25 | 2017-10-25 | 13 | 100% |
| 15 | 2 | **Affichage GIS des données et évaluation du réseau** | 8d | 2017-10-25 | 2017-11-03 |  |  |
| 16 | 2.1 | Graph: nbr. de stations versus le temps | 1d | 2017-10-25 | 2017-10-25 |  |  |
| 17 | 2.2 | Associer des stations météos aux puits | 1d | 2017-10-25 | 2017-10-25 |  |  |
| 18 | 2.3 | Production d'une carte avec la localisation des stations | 2d | 2017-10-26 | 2017-10-27 |  |  |
| 19 | 2.4 | Déterminer les stations qui sont dans la zone d'étude | 3d | 2017-10-27 | 2017-10-31 |  |  |
| 20 | 2.5 | Graph: distance puits vs station climatique active | 1d | 2017-11-01 | 2017-11-01 |  |  |
| 21 | 2.6 | Lecture circulaire 1217 de l'USGS | 8d | 2017-10-25 | 2017-11-03 |  |  |
| 22 | 3 | **Prédiction hydrométrique à partir des données piézométriques et climatiques** | 28d | 2017-10-25 | 2017-12-01 |  |  |
| 23 | 3.1 | Lecture Pal et Prakash (2017) | 8d | 2017-10-25 | 2017-11-03 |  |  |
| 24 | 3.2 | Preuve de concept pour quelques puits | 28d | 2017-10-25 | 2017-12-01 |  |  |

Notes:
- 2: Télécharger les données des stations qui ont été ciblées par l'UQAM. / Pour ce faire, le code de GWHAT sera modifé pour qu'il soit possible de lire une liste de stations météo et de télécharger automatiquement les données via un script python, sans avoir à utiliser l'interface graphique de GWHAT. L'objectif est que la mise à jour des données puisse être faite de façon automatique sur une base biannuelle.
- 3: Utiliser l'API de GWHAT pour combler automatiquement les données manquantes dans les jeux de données météo via un script python.
- 4: Créer une API permettant de lire la liste des stations piézométriques existantes sur le site du RSESQ du MDDELCC et de télécharger, formatter et sauvegarder les données dans un format csv.
- 5: Créer un script Python utilisant l'API ayant été produit à l'étape précédente pour télécharger les données de niveau d'eau automatiquement du site du MDDELCC afin de mettre à jours les données piézométriques du projet sur une base biannuelle.
- 7: L'objectif est d'acquérir les connaissances nécessaires pour mener à bien l'Issue #1. / Documentation de Python: / - [x] https://docs.python.org/2/library/sqlite3.html / Documentation de SQLite: / - [x] https://www.tutorialspoint.com/sqlite/sqlite_python.htm / Tutoriel de ZetCode: / - [x] http://zetcode.com/db/sqlitepythontutorial / Pandas: / - [x] http://pandas.pydata.org/pandas-docs/version/0.15.0/generated/pandas.read_sql.html / - [x] https://www.dataquest.io/blog/python-pandas-databases
- 8: Créer une API qui permettra de lire et récupérer les données de la base de données HYDAT dans le but de pouvoir mettre à jour les données hydrométriques utilisées pour le projet sur une base bi-annuelle.
- 10: Créer un script dans un IPython notebook faisant appel à l'API développée plus tôt pour récupérer automatiquement les données d'intérêts dans la base de données HYDAT.
- 11: L'objectif est de faire en sorte que le téléchargement de l'information relative aux stations soit moins long la première fois que l'utilisateur utilise l'API. / https://github.com/jnsebgosselin/inrs-rsesq/issues/15
- 12: L'objectif est de reprendre le travail qui a été fait dans le module météo de WHAT et de réorganiser le tout dans une API qui est similaire à ce qui a été fait pour le CEHQ (MDDELCC_CEHQ_Reader) et le RSESQ du MDDELCC (MDDELCC_RSESQ_Reader). / https://github.com/jnsebgosselin/inrs-rsesq/pull/19
- 13: L'objectif est d'utiliser l'APi pour télécharger de façon automatique les données climatiques journalières de toutes les stations climatiques actives du Québec.
- 14: Ajout de la documentatation dans le README.md du répertoire GitHub.
- 16: Produire un graphique mettant en relation le nombre de stations piézométriques pour lesquelles des données sont disponibles au Québec en fonction du temps. / https://github.com/jnsebgosselin/inrs-rsesq/issues/6

| ID | WBS | Task | Type | Duration | Start | Finish | Predecessors |
| --- | --- | --- | --- | --- | --- | --- | --- |
| 25 | 4 | **Combler les données climatiques manquantes avec du machine learning** |  | 11d | 2017-11-13 | 2017-11-27 |  |
| 26 | 4.1 | Combler les données manquantes dans les stations actives |  | 6d | 2017-11-13 | 2017-11-20 |  |
| 27 | 4.2 | Ajouter des stations non actives au besoin |  | 5d | 2017-11-21 | 2017-11-27 | 26 |
| 28 | 5 | **Développement de GWHAT** |  | 46d | 2017-11-06 | 2018-01-10 |  |
| 29 | 5.1 | **Données piézométriques** |  | 5d | 2018-01-04 | 2018-01-10 |  |
| 30 | 5.1.1 | Inclure l'API dans GWHAT |  | 3d | 2018-01-04 | 2018-01-08 |  |
| 31 | 5.1.2 | Mettre à jour la doc. de GWHAT |  | 2d | 2018-01-09 | 2018-01-10 | 30 |
| 32 | 5.2 | Écrire un article scientifique |  | 20d | 2017-11-06 | 2017-12-01 |  |
| 33 | 5.3 | Compléter la doc de GWHAT |  | 10d | 2017-11-06 | 2017-11-17 |  |
| 34 | 5.4 | **Améliorer l'outil pour télécharger les données météo** |  | 14d | 2017-11-20 | 2017-12-07 |  |
| 35 | 5.4.1 | Modifier l'outil de recherche des stations dans GWHAT |  | 2d | 2017-11-20 | 2017-11-21 |  |
| 36 | 5.4.2 | Compléter la doc de GWHAT |  | 2d | 2017-11-22 | 2017-11-23 | 35 |
| 37 | 5.4.3 | Évaluer les options pour la diffusion des travaux |  | 10d | 2017-11-24 | 2017-12-07 | 36 |
| 38 | 6 | **Caractérisation des puits** |  | 112d | 2017-07-04 | 2017-12-08 |  |
| 39 | 6.1 | Fonction de réponse barométrique |  | 5d | 2017-12-04 | 2017-12-08 |  |
| 40 | 6.2 | Déf. des conditions autour des puits |  | 1d | 2017-09-11 | 2017-09-11 |  |
| 41 | 6.3 | Classement des puits et leurs fonctions |  | 1d | 2017-09-11 | 2017-09-11 |  |
| 42 | 6.4 | Livrable: grille de classement des puits | milestone | 0d | 2017-07-04 | 2017-07-04 |  |
| 43 | 7 | **Volet: exploitation** |  | 10d | 2017-08-28 | 2017-09-11 |  |
| 44 | 7.1 | Estimation de la recharge |  | 1d | 2017-09-11 | 2017-09-11 |  |
| 45 | 7.2 | Détection des changements dans les tendances |  | 1d | 2017-09-11 | 2017-09-11 |  |
| 46 | 7.3 | Prévision des niveau d'eau |  | 1d | 2017-09-11 | 2017-09-11 |  |
| 47 | 7.4 | Lien avec les cours d'eau |  | 1d | 2017-09-11 | 2017-09-11 |  |
| 48 | 7.5 | Graph: normales mensuelles |  | 1d | 2017-08-28 | 2017-08-28 |  |

Notes:
- 30: Inclure les fonctionalités de l'API dans l'interface graphique de GWHAT.
- 33: Générer la documentation en lien avec la collecte et l'estimation des valeurs manquantes dans les séries météo journalières dans GWHAT. / Pour ce faire, il est proposé de rédiger le tout à l'aide de Read the Doc: http://docs.readthedocs.io/en/latest/getting_started.html
- 36: Générer la documentation en lien avec la collecte et l'estimation des valeurs manquantes dans les séries météo journalières dans GWHAT. / Pour ce faire, il est proposé de rédiger le tout à l'aide de Read the Doc: http://docs.readthedocs.io/en/latest/getting_started.html
- 39: Utiliser le logiciel KGS-BRF à partir de l'interface de GWHAT pour caractériser la fonction de réponse barométrique des puits à l'aide de données de niveau d'eau acquises aux 15 minutes. / https://github.com/jnsebgosselin/inrs-rsesq/issues/8
- 48: L'objectif est de pouvoir comparer visuellement où se situ le niveau actuel de l'eau souterraine par rapport aux années antécédentes. Pour se faire, il est proposé de s'inspirer de ce que produit l'USGS pour l'ensemble des puits de son Climate Response Network (voir image ci-dessous). Ces statistiques et graphiques doivent pouvoir être mis à jour de façon automatique chaque fois que de nouvelles données sont disponibles. / https://github.com/jnsebgosselin/inrs-rsesq/issues/7

| ID | WBS | Task | Type | Duration | Start | Finish |
| --- | --- | --- | --- | --- | --- | --- |
| 49 | 8 | **Volet: rationalisation** |  | 1d | 2017-09-11 | 2017-09-11 |
| 50 | 8.1 | Graph: localisation puits vs météo |  | 1d | 2017-09-11 | 2017-09-11 |
| 51 | 9 | **Volet: diffusion** |  | 593d | 2017-09-11 | 2019-12-30 |
| 52 | 9.1 | Données traitées en format csv |  | 1d | 2017-09-11 | 2017-09-11 |
| 53 | 9.2 | Graph: hydrogramme et météo |  | 1d | 2017-09-11 | 2017-09-11 |
| 54 | 9.3 | Rapport: fin de projet | milestone | 0d | 2019-12-31 | 2019-12-31 |
| 55 | 10 | **Formation continue** |  | 19d | 2017-10-02 | 2017-10-27 |
| 56 | 10.1 | Lecture Klove et al. (2014) |  | 5d | 2017-10-23 | 2017-10-27 |
| 57 | 10.2 | Lire le contenu du CEHQ |  | 1d | 2017-10-02 | 2017-10-02 |

Notes:
- 57: Survoler et lire tout ce qui est disponible sur: / https://www.cehq.gouv.qc.ca/hydrometrie
